# راه اندازی استارتاپ

How a schedule from MS Project changed from version to version. A marks actual dates.

## Version 1 (saved 2022-02-06, file 4.1_P3_G5.mpp)

Note of the change: 3rd commit

| ID | WBS | Task | Duration | Start | Finish | Predecessors | Total float | Constraint |
| --- | --- | --- | --- | --- | --- | --- | --- | --- |
| 1 | 1 | **فاز صفر: اقدامات اولیه** | 68.5d | 2021-09-23 | 2021-12-22 |  | 4.5d |  |
| 2 | 1.1 | **بررسی بازار** | 32.5d | 2021-09-23 | 2021-11-07 |  | 4.5d |  |
| 3 |  | تحقیقات بازار | 15.5d | 2021-09-23 | 2021-10-14 |  | 4.5d |  |
| 4 |  | بررسی رقبا | 11d | 2021-09-23 | 2021-10-09 |  | 9d |  |
| 5 |  | امکان سنجی | 17d | 2021-10-16 | 2021-11-07 | 3, 4 | 4.5d |  |
| 6 | 1.2 | **تهیه استاد مورد نیاز** | 12d | 2021-11-07 | 2021-11-22 | 2 | 4.5d |  |
| 7 |  | تهیه Business plan | 12d | 2021-11-07 | 2021-11-22 |  | 4.5d |  |
| 8 | 1.3 | **اقدامات اجرایی** | 24d | 2021-11-22 | 2021-12-22 | 6 | 4.5d |  |
| 9 |  | دریافت مجوز‌های مورد نیاز | 6.5d | 2021-11-22 | 2021-11-30 |  | 22d |  |
| 10 |  | اخذ مجوزهای قانونی برای پروژه | 0d | 2021-11-30 | 2021-11-30 | 9 | 22d |  |
| 11 |  | جذب سرمایه گذار | 18.5d | 2021-11-22 | 2021-12-15 |  | 8.5d |  |
| 12 |  | استخدام نیر‌وهای مورد نیاز | 24d | 2021-11-22 | 2021-12-22 |  | 4.5d |  |
| 13 |  | تهیه محل استقرار نیرو‌ها | 7d | 2021-12-05 | 2021-12-13 | 11SS+10d | 8.5d |  |
| 14 |  | تهیه و استقرار تدارکات | 3d | 2021-12-14 | 2021-12-18 | 13 | 8.5d |  |
| 15 | 2 | **فاز یک: ساخت محصول** | 120.5d | 2021-12-22 | 2022-06-11 | 1 | 0d |  |
| 16 | 2.1 | **تحلیل و طراحی سایت و اپلیکیشن** | 32d | 2021-12-22 | 2022-02-01 |  | 5.5d |  |
| 17 |  | بررسی best practice های موجود | 6d | 2021-12-22 | 2021-12-29 |  | 5.5d |  |
| 18 |  | مشخص کردن نیازمندی ها | 6d | 2021-12-22 | 2021-12-29 |  | 5.5d |  |
| 19 |  | طراحی فرآیندها و امکانات محصول | 6d | 2021-12-30 | 2022-01-08 | 17, 18 | 5.5d |  |
| 20 |  | طراحی محصول | 20d | 2022-01-08 | 2022-02-01 | 19 | 5.5d |  |
| 21 | 2.2 | **توسعه سایت و اپلیکیشن** | 61d | 2021-12-22 | 2022-03-13 | 16SS | 4.5d |  |
| 22 |  | تولید محتوای سایت و اپلیکیشن (متنی و ...) | 33d | 2021-12-22 | 2022-02-02 |  | 4.5d |  |
| 23 |  | طراحی Back-end | 20d | 2022-02-02 | 2022-02-28 | 20 | 7.5d |  |
| 24 |  | طراحی دیتا بیس | 10d | 2022-02-02 | 2022-02-14 | 20 | 17.5d |  |
| 25 |  | طراحی صفحات سایت و اپلیکیشن (ui/ux) | 7d | 2022-02-03 | 2022-02-12 | 20, 22 | 4.5d |  |
| 26 |  | طراحی Front-end | 15d | 2022-02-13 | 2022-03-06 | 25 | 4.5d |  |
| 27 |  | راه‌اندازی سایت (نسخه اولیه) | 6d | 2022-03-06 | 2022-03-13 | 26, 23, 24 | 4.5d |  |
| 28 | 2.3 | **تست محصول** | 59.5d | 2022-03-14 | 2022-06-11 | 21 | 0d |  |
| 29 |  | تست سیستم | 20d | 2022-03-14 | 2022-04-14 |  | 9.5d |  |
| 30 |  | تست سایت | 20d | 2022-03-14 | 2022-04-14 |  | 9.5d |  |
| 31 |  | تست اپلیکیشن | 25d | 2022-03-14 | 2022-04-20 |  | 4.5d |  |
| 32 |  | رفع ایرادات احتمالی | 30d | 2022-04-27 | 2022-06-11 | 29, 30, 31 | 0d | start no earlier than 2022-04-27 |
| 33 | 3 | **فاز دو: مارکتینگ** | 101.5d | 2022-03-19 | 2022-08-14 | 15SS+65d | 7d |  |
| 34 | 3.1 | **B2B مارکتینگ** | 30d | 2022-03-19 | 2022-05-04 |  | 33d |  |
| 35 |  | بازاریابی و جذب پزشکان برای خدمت رسانی | 20d | 2022-03-19 | 2022-04-19 |  | 33d |  |
| 36 |  | عقد قرار داد با خدمت دهندگان | 10d | 2022-04-20 | 2022-05-04 | 35 | 33d |  |
| 37 | 3.2 | **R&D** | 77.5d | 2022-03-19 | 2022-07-10 |  | 31d |  |
| 38 |  | بردن خدمات تحت پوشش بیمه | 30d | 2022-05-05 | 2022-06-16 | 36 | 48.5d |  |
| 39 |  | طراحی گیمیفیکیشن در خدمات | 21d | 2022-03-28 | 2022-04-25 |  | 84.5d | start no earlier than 2022-03-28 |
| 40 |  | تحقیق و توسعه خدمات | 15d | 2022-03-19 | 2022-04-13 |  | 93.5d |  |
| 41 |  | بررسی رفتار مشتری | 22d | 2022-06-12 | 2022-07-10 | 32 | 0d |  |
| 42 |  | بهبود محصول | 22d | 2022-06-12 | 2022-07-10 | 32 | 0d |  |
| 43 | 3.3 | **دیجیتال مارکتینگ** | 101.5d | 2022-03-19 | 2022-08-14 |  | 7d |  |
| 44 |  | برگزاری کمپین معرفی محصول | 24d | 2022-07-11 | 2022-08-14 | 42, 41 | 0d |  |
| 45 |  | تبلیغ برند و خدمات در شبکه های اجتماعی | 70d | 2022-03-19 | 2022-06-29 |  | 38.5d |  |
| 46 |  | مدیریت شبکه‌‌های اجتماعی | 70d | 2022-03-19 | 2022-06-29 |  | 38.5d |  |
| 47 |  | تهیه گزارشات مالی | 0d | 2022-08-14 | 2022-08-14 | 44, 45, 46 | 7d |  |
| 48 | 4 | **فاز سه: پشتیبانی** | 56.5d | 2022-06-07 | 2022-08-22 | 33SS+52d | 0d |  |
| 49 | 4.1 | **پشتیبانی از خدمات** | 56.5d | 2022-06-07 | 2022-08-22 |  | 0d |  |
| 50 |  | پشتیبانی مشتریان | 31d | 2022-07-11 | 2022-08-22 | 44SS, 56 | 0d |  |
| 51 |  | پشتیبانی پزشکان | 45.5d | 2022-06-07 | 2022-08-06 | 35, 36 | 11d |  |
| 52 | 4.2 | **پشتیبانی فنی** | 31d | 2022-07-11 | 2022-08-22 | 42 | 0d |  |
| 53 |  | پشتیبانی سایت و اپلیکیشن | 31d | 2022-07-11 | 2022-08-22 |  | 0d |  |
| 54 | 4.3 | **پشتیبانی کار کنان** | 14d | 2022-06-12 | 2022-06-28 | 15 | 8d |  |
| 55 |  | آموزش کارکنان | 6d | 2022-06-12 | 2022-06-19 |  | 8d | start no earlier than 2022-06-12 |
| 56 |  | پشتیبانی کارکنان | 8d | 2022-06-19 | 2022-06-28 | 55 | 8d |  |
| 57 |  | برگزاری جلسه با کادر اجرایی پروژه | 0d | 2022-06-28 | 2022-06-28 | 56 | 39d |  |

## Version 2 (saved 2022-02-06, file Plan_P3_G5.mpp)

Note of the change: 3rd commit

Last finish 2022-08-22 → 2022-08-06 (-16d).

Changed:

| ID | Task | Start | Finish | Duration | Total float | Other |
| --- | --- | --- | --- | --- | --- | --- |
| 15 | **فاز یک: ساخت محصول** |  | 2022-06-11 → 2022-05-22 (-20d) | 120.5d → 108.5d | 0d → 1d |  |
| 28 | **تست محصول** |  | 2022-06-11 → 2022-05-22 (-20d) | 59.5d → 47.5d | 0d → 1d |  |
| 31 | تست اپلیکیشن |  | 2022-04-20 → 2022-04-14 (-6d) | 25d → 20d | 4.5d → 1d |  |
| 32 | رفع ایرادات احتمالی | 2022-04-27 → 2022-04-16 (-11d) | 2022-06-11 → 2022-05-22 (-20d) | 30d → 27.5d | 0d → 1d | constraint start no earlier than 2022-04-27 → none |
| 33 | **فاز دو: مارکتینگ** |  | 2022-08-14 → 2022-07-26 (-19d) | 101.5d → 89.5d | 7d → 8d |  |
| 37 | **R&D** |  | 2022-07-10 → 2022-06-23 (-17d) | 77.5d → 65.5d | 31d → 32d |  |
| 39 | طراحی گیمیفیکیشن در خدمات | 2022-03-28 → 2022-03-19 (-9d) | 2022-04-25 → 2022-04-19 (-6d) | 21d → 20d | 84.5d → 77.5d | constraint start no earlier than 2022-03-28 → none |
| 41 | بررسی رفتار مشتری | 2022-06-12 → 2022-05-23 (-20d) | 2022-07-10 → 2022-06-23 (-17d) |  | 0d → 1d | resources تحلیلگر داده [300%]; مدیر پروژه [14%]; مدیر مارکتینگ [33%]; CRM کارشناس [300%]; منابع انسانی [300%]; ملزومات اداری(یادداشت را بخوانید!) [800%]; کامپیوتر حرفه ای [300%]; اسباب و اثاثیه(میز و صندلی و کمد و غیره); پرینتر → تحلیلگر داده [300%]; مدیر پروژه [14%]; مدیر مارکتینگ [33%]; CRM کارشناس [300%]; منابع انسانی [300%]; ملزومات اداری(یادداشت را بخوانید!) [800%]; کامپیوتر حرفه ای [200%]; اسباب و اثاثیه(میز و صندلی و کمد و غیره); پرینتر |
| 42 | بهبود محصول | 2022-06-12 → 2022-05-23 (-20d) | 2022-07-10 → 2022-06-23 (-17d) |  | 0d → 1d |  |
| 43 | **دیجیتال مارکتینگ** |  | 2022-08-14 → 2022-07-26 (-19d) | 101.5d → 89.5d | 7d → 8d |  |
| 44 | برگزاری کمپین معرفی محصول | 2022-07-11 → 2022-06-25 (-16d) | 2022-08-14 → 2022-07-26 (-19d) |  | 0d → 1d |  |
| 47 | تهیه گزارشات مالی | 2022-08-14 → 2022-07-26 (-19d) | 2022-08-14 → 2022-07-26 (-19d) |  | 7d → 8d |  |
| 48 | **فاز سه: پشتیبانی** |  | 2022-08-22 → 2022-08-06 (-16d) | 56.5d → 45.5d |  |  |
| 49 | **پشتیبانی از خدمات** |  | 2022-08-22 → 2022-08-06 (-16d) | 56.5d → 45.5d |  |  |
| 50 | پشتیبانی مشتریان | 2022-07-11 → 2022-06-25 (-16d) | 2022-08-22 → 2022-08-04 (-18d) |  | 0d → 1d | resources مدیر پروژه [7%]; کارشناس پشتیبانی; CRM کارشناس [400%]; ملزومات اداری(یادداشت را بخوانید!) [400%]; کامپیوتر عادی [500%]; اسباب و اثاثیه(میز و صندلی و کمد و غیره) [200%]; پرینتر [200%] → مدیر پروژه [7%]; کارشناس پشتیبانی; CRM کارشناس [400%]; ملزومات اداری(یادداشت را بخوانید!) [400%]; کامپیوتر عادی [400%]; اسباب و اثاثیه(میز و صندلی و کمد و غیره) [200%]; پرینتر [200%] |
| 52 | **پشتیبانی فنی** | 2022-07-11 → 2022-06-25 (-16d) | 2022-08-22 → 2022-08-04 (-18d) |  | 0d → 1d |  |
| 53 | پشتیبانی سایت و اپلیکیشن | 2022-07-11 → 2022-06-25 (-16d) | 2022-08-22 → 2022-08-04 (-18d) |  | 0d → 1d |  |
| 54 | **پشتیبانی کار کنان** | 2022-06-12 → 2022-06-07 (-5d) | 2022-06-28 → 2022-06-22 (-6d) | 14d → 13d | 8d → 1.5d |  |
| 55 | آموزش کارکنان | 2022-06-12 → 2022-06-07 (-5d) | 2022-06-19 → 2022-06-13 (-6d) | 6d → 5d | 8d → 1.5d | constraint start no earlier than 2022-06-12 → none |
| 56 | پشتیبانی کارکنان | 2022-06-19 → 2022-06-13 (-6d) | 2022-06-28 → 2022-06-22 (-6d) |  | 8d → 1.5d |  |
| 57 | برگزاری جلسه با کادر اجرایی پروژه | 2022-06-28 → 2022-06-22 (-6d) | 2022-06-28 → 2022-06-22 (-6d) |  | 39d → 32.5d |  |

## Version 3 (data date 2022-02-06, saved 2022-02-06, file ii_P3_G5.mpp)

Note of the change: 3rd commit

Last finish 2022-08-06 → 2022-08-22 (+16d). Complete tasks 0 → 13.

Changed:

| ID | Task | Start | Finish | Duration | Complete | Total float | Other |
| --- | --- | --- | --- | --- | --- | --- | --- |
| 1 | **فاز صفر: اقدامات اولیه** | 2021-09-23 A |  |  | 0% → 99% | 1d → 0d |  |
| 2 | **بررسی بازار** | 2021-09-23 A | 2021-11-07 A |  | 0% → 100% | 1d → none |  |
| 3 | تحقیقات بازار | 2021-09-23 A | 2021-10-14 A |  | 0% → 100% | 1d → none |  |
| 4 | بررسی رقبا | 2021-09-23 A | 2021-10-09 A |  | 0% → 100% | 5.5d → none |  |
| 5 | امکان سنجی | 2021-10-16 A | 2021-11-07 A |  | 0% → 100% | 1d → none |  |
| 6 | **تهیه استاد مورد نیاز** | 2021-11-07 A | 2021-11-22 A |  | 0% → 100% | 1d → none |  |
| 7 | تهیه Business plan | 2021-11-07 A | 2021-11-22 A |  | 0% → 100% | 1d → none |  |
| 8 | **اقدامات اجرایی** | 2021-11-22 A |  |  | 0% → 99% | 1d → 0d |  |
| 9 | دریافت مجوز‌های مورد نیاز | 2021-11-22 A | 2021-11-30 A |  | 0% → 100% | 18.5d → none |  |
| 10 | اخذ مجوزهای قانونی برای پروژه | 2021-11-30 A | 2021-11-30 A |  | 0% → 100% | 18.5d → none |  |
| 11 | جذب سرمایه گذار | 2021-11-22 A | 2021-12-15 A |  | 0% → 100% | 5d → none |  |
| 12 | استخدام نیر‌وهای مورد نیاز | 2021-11-22 A | 2021-12-22 A |  | 0% → 100% | 1d → none |  |
| 13 | تهیه محل استقرار نیرو‌ها | 2021-12-05 A |  |  | 0% → 99% | 5d → 0d |  |
| 14 | تهیه و استقرار تدارکات | 2021-12-14 A |  |  | 0% → 99% | 5d → 4d |  |
| 15 | **فاز یک: ساخت محصول** | 2021-12-22 A | 2022-05-22 → 2022-06-11 (+20d) | 108.5d → 120.5d | 0% → 36% | 1d → 0d |  |
| 16 | **تحلیل و طراحی سایت و اپلیکیشن** | 2021-12-22 A | 2022-02-01 A |  | 0% → 100% | 2d → none |  |
| 17 | بررسی best practice های موجود | 2021-12-22 A | 2021-12-29 A |  | 0% → 100% | 2d → none |  |
| 18 | مشخص کردن نیازمندی ها | 2021-12-22 A | 2021-12-29 A |  | 0% → 100% | 2d → none |  |
| 19 | طراحی فرآیندها و امکانات محصول | 2021-12-30 A | 2022-01-08 A |  | 0% → 100% | 2d → none |  |
| 20 | طراحی محصول | 2022-01-08 A | 2022-02-01 A |  | 0% → 100% | 2d → none |  |
| 21 | **توسعه سایت و اپلیکیشن** | 2021-12-22 A |  |  | 0% → 47% | 1d → 4.5d |  |
| 22 | تولید محتوای سایت و اپلیکیشن (متنی و ...) | 2021-12-22 A | 2022-02-02 A |  | 0% → 100% | 1d → none |  |
| 23 | طراحی Back-end | 2022-02-02 A |  |  | 0% → 18% | 4d → 7.5d |  |
| 24 | طراحی دیتا بیس | 2022-02-02 A |  |  | 0% → 35% | 14d → 17.5d |  |
| 25 | طراحی صفحات سایت و اپلیکیشن (ui/ux) | 2022-02-03 A |  |  | 0% → 36% | 1d → 4.5d |  |
| 28 | **تست محصول** |  | 2022-05-22 → 2022-06-11 (+20d) | 47.5d → 59.5d |  | 1d → 0d |  |
| 31 | تست اپلیکیشن |  | 2022-04-14 → 2022-04-20 (+6d) | 20d → 25d |  | 1d → 4.5d |  |
| 32 | رفع ایرادات احتمالی | 2022-04-16 → 2022-04-27 (+11d) | 2022-05-22 → 2022-06-11 (+20d) | 27.5d → 30d |  | 1d → 0d | constraint none → start no earlier than 2022-04-27 |
| 33 | **فاز دو: مارکتینگ** |  | 2022-07-26 → 2022-08-14 (+19d) | 89.5d → 101.5d |  | 8d → 7d |  |
| 37 | **R&D** |  | 2022-06-23 → 2022-07-10 (+17d) | 65.5d → 77.5d |  | 32d → 31d |  |
| 39 | طراحی گیمیفیکیشن در خدمات | 2022-03-19 → 2022-03-28 (+9d) | 2022-04-19 → 2022-04-25 (+6d) | 20d → 21d |  | 77.5d → 84.5d | constraint none → start no earlier than 2022-03-28 |
| 41 | بررسی رفتار مشتری | 2022-05-23 → 2022-06-12 (+20d) | 2022-06-23 → 2022-07-10 (+17d) |  |  | 1d → 0d | resources تحلیلگر داده [300%]; مدیر پروژه [14%]; مدیر مارکتینگ [33%]; CRM کارشناس [300%]; منابع انسانی [300%]; ملزومات اداری(یادداشت را بخوانید!) [800%]; کامپیوتر حرفه ای [200%]; اسباب و اثاثیه(میز و صندلی و کمد و غیره); پرینتر → تحلیلگر داده [300%]; مدیر پروژه [14%]; مدیر مارکتینگ [33%]; CRM کارشناس [300%]; منابع انسانی [300%]; ملزومات اداری(یادداشت را بخوانید!) [800%]; کامپیوتر حرفه ای [300%]; اسباب و اثاثیه(میز و صندلی و کمد و غیره); پرینتر |
| 42 | بهبود محصول | 2022-05-23 → 2022-06-12 (+20d) | 2022-06-23 → 2022-07-10 (+17d) |  |  | 1d → 0d |  |
| 43 | **دیجیتال مارکتینگ** |  | 2022-07-26 → 2022-08-14 (+19d) | 89.5d → 101.5d |  | 8d → 7d |  |
| 44 | برگزاری کمپین معرفی محصول | 2022-06-25 → 2022-07-11 (+16d) | 2022-07-26 → 2022-08-14 (+19d) |  |  | 1d → 0d |  |
| 47 | تهیه گزارشات مالی | 2022-07-26 → 2022-08-14 (+19d) | 2022-07-26 → 2022-08-14 (+19d) |  |  | 8d → 7d |  |
| 48 | **فاز سه: پشتیبانی** |  | 2022-08-06 → 2022-08-22 (+16d) | 45.5d → 56.5d |  |  |  |
| 49 | **پشتیبانی از خدمات** |  | 2022-08-06 → 2022-08-22 (+16d) | 45.5d → 56.5d |  |  |  |
| 50 | پشتیبانی مشتریان | 2022-06-25 → 2022-07-11 (+16d) | 2022-08-04 → 2022-08-22 (+18d) |  |  | 1d → 0d | resources مدیر پروژه [7%]; کارشناس پشتیبانی; CRM کارشناس [400%]; ملزومات اداری(یادداشت را بخوانید!) [400%]; کامپیوتر عادی [400%]; اسباب و اثاثیه(میز و صندلی و کمد و غیره) [200%]; پرینتر [200%] → مدیر پروژه [7%]; کارشناس پشتیبانی; CRM کارشناس [400%]; ملزومات اداری(یادداشت را بخوانید!) [400%]; کامپیوتر عادی [500%]; اسباب و اثاثیه(میز و صندلی و کمد و غیره) [200%]; پرینتر [200%] |
| 52 | **پشتیبانی فنی** | 2022-06-25 → 2022-07-11 (+16d) | 2022-08-04 → 2022-08-22 (+18d) |  |  | 1d → 0d |  |
| 53 | پشتیبانی سایت و اپلیکیشن | 2022-06-25 → 2022-07-11 (+16d) | 2022-08-04 → 2022-08-22 (+18d) |  |  | 1d → 0d |  |
| 54 | **پشتیبانی کار کنان** | 2022-06-07 → 2022-06-12 (+5d) | 2022-06-22 → 2022-06-28 (+6d) | 13d → 14d |  | 1.5d → 8d |  |
| 55 | آموزش کارکنان | 2022-06-07 → 2022-06-12 (+5d) | 2022-06-13 → 2022-06-19 (+6d) | 5d → 6d |  | 1.5d → 8d | constraint none → start no earlier than 2022-06-12 |
| 56 | پشتیبانی کارکنان | 2022-06-13 → 2022-06-19 (+6d) | 2022-06-22 → 2022-06-28 (+6d) |  |  | 1.5d → 8d |  |
| 57 | برگزاری جلسه با کادر اجرایی پروژه | 2022-06-22 → 2022-06-28 (+6d) | 2022-06-22 → 2022-06-28 (+6d) |  |  | 32.5d → 39d |  |

## Version 4 (saved 2022-02-06, file 7_P3_G5.mpp)

Note of the change: 3rd commit

Last finish stays 2022-08-22. Complete tasks 13 → 0.

Changed:

| ID | Task | Start | Finish | Complete | Total float |
| --- | --- | --- | --- | --- | --- |
| 1 | **فاز صفر: اقدامات اولیه** | 2021-09-23 A → 2021-09-23 |  | 99% → 0% | 0d → 4.5d |
| 2 | **بررسی بازار** | 2021-09-23 A → 2021-09-23 | 2021-11-07 A → 2021-11-07 | 100% → 0% | none → 4.5d |
| 3 | تحقیقات بازار | 2021-09-23 A → 2021-09-23 | 2021-10-14 A → 2021-10-14 | 100% → 0% | none → 4.5d |
| 4 | بررسی رقبا | 2021-09-23 A → 2021-09-23 | 2021-10-09 A → 2021-10-09 | 100% → 0% | none → 9d |
| 5 | امکان سنجی | 2021-10-16 A → 2021-10-16 | 2021-11-07 A → 2021-11-07 | 100% → 0% | none → 4.5d |
| 6 | **تهیه استاد مورد نیاز** | 2021-11-07 A → 2021-11-07 | 2021-11-22 A → 2021-11-22 | 100% → 0% | none → 4.5d |
| 7 | تهیه Business plan | 2021-11-07 A → 2021-11-07 | 2021-11-22 A → 2021-11-22 | 100% → 0% | none → 4.5d |
| 8 | **اقدامات اجرایی** | 2021-11-22 A → 2021-11-22 |  | 99% → 0% | 0d → 4.5d |
| 9 | دریافت مجوز‌های مورد نیاز | 2021-11-22 A → 2021-11-22 | 2021-11-30 A → 2021-11-30 | 100% → 0% | none → 22d |
| 10 | اخذ مجوزهای قانونی برای پروژه | 2021-11-30 A → 2021-11-30 | 2021-11-30 A → 2021-11-30 | 100% → 0% | none → 22d |
| 11 | جذب سرمایه گذار | 2021-11-22 A → 2021-11-22 | 2021-12-15 A → 2021-12-15 | 100% → 0% | none → 8.5d |
| 12 | استخدام نیر‌وهای مورد نیاز | 2021-11-22 A → 2021-11-22 | 2021-12-22 A → 2021-12-22 | 100% → 0% | none → 4.5d |
| 13 | تهیه محل استقرار نیرو‌ها | 2021-12-05 A → 2021-12-05 |  | 99% → 0% | 0d → 8.5d |
| 14 | تهیه و استقرار تدارکات | 2021-12-14 A → 2021-12-14 |  | 99% → 0% | 4d → 8.5d |
| 15 | **فاز یک: ساخت محصول** | 2021-12-22 A → 2021-12-22 |  | 36% → 0% |  |
| 16 | **تحلیل و طراحی سایت و اپلیکیشن** | 2021-12-22 A → 2021-12-22 | 2022-02-01 A → 2022-02-01 | 100% → 0% | none → 5.5d |
| 17 | بررسی best practice های موجود | 2021-12-22 A → 2021-12-22 | 2021-12-29 A → 2021-12-29 | 100% → 0% | none → 5.5d |
| 18 | مشخص کردن نیازمندی ها | 2021-12-22 A → 2021-12-22 | 2021-12-29 A → 2021-12-29 | 100% → 0% | none → 5.5d |
| 19 | طراحی فرآیندها و امکانات محصول | 2021-12-30 A → 2021-12-30 | 2022-01-08 A → 2022-01-08 | 100% → 0% | none → 5.5d |
| 20 | طراحی محصول | 2022-01-08 A → 2022-01-08 | 2022-02-01 A → 2022-02-01 | 100% → 0% | none → 5.5d |
| 21 | **توسعه سایت و اپلیکیشن** | 2021-12-22 A → 2021-12-22 |  | 47% → 0% |  |
| 22 | تولید محتوای سایت و اپلیکیشن (متنی و ...) | 2021-12-22 A → 2021-12-22 | 2022-02-02 A → 2022-02-02 | 100% → 0% | none → 4.5d |
| 23 | طراحی Back-end | 2022-02-02 A → 2022-02-02 |  | 18% → 0% |  |
| 24 | طراحی دیتا بیس | 2022-02-02 A → 2022-02-02 |  | 35% → 0% |  |
| 25 | طراحی صفحات سایت و اپلیکیشن (ui/ux) | 2022-02-03 A → 2022-02-03 |  | 36% → 0% |  |
